# Gantt_ProjetDiscret2

Schedule from MS Project, 2015-10-19 to 2016-03-18, status date 2016-03-21, 7 hours a day, costs in €, A marks actual dates.
UFR-SFA

## Calendars

- Standard: Mon-Fri 09:00-12:00, 14:00-18:00; Sat-Sun off. Exceptions (off unless hours are given): 2015-11-02 to 2015-11-13 (Cours 02/11 - 13/11), 2015-11-23 to 2015-12-11 (Cours 23/11 - 11/12), 2015-12-25 to 2016-01-01 (Vacances), 2016-01-04 to 2016-01-15 (Cours 04/01 - 15/01), 2016-02-01 to 2016-02-12 (Cours 01/02 - 12/02), 2016-02-29 to 2016-03-04 (Cours 29/02 - 04/03).

## Resources

| Resource | Rate |
| --- | --- |
| Zied | 21.43 |
| Thomas | 21.43 |
| Adrien | 21.43 |
| Lydie | 21.43 |

## Schedule

| ID | WBS | Task | Type | Duration | Start | Finish | Predecessors | Complete | Constraint | Resources | Work | Actual work | Cost | Actual cost |
| --- | --- | --- | --- | --- | --- | --- | --- | --- | --- | --- | --- | --- | --- | --- |
| 1 | 1 | A. Jalon début | milestone | 0d | 2015-10-19 A | 2015-10-19 A |  | 100% |  |  |  |  |  |  |
| 2 | 2 | 0. Rédaction cahier des charges |  | 10d | 2015-10-19 A | 2015-10-30 A | 1 | 100% |  | Adrien; Lydie; Thomas; Zied | 280h | 280h | 6,000 | 6,000 |
| 3 | 3 | B. Jalon début développement | milestone | 0d | 2015-10-30 A | 2015-10-30 A | 2 | 100% |  |  |  |  |  |  |
| 4 | 4 | 1. Documentation, aide utilisateur, tests |  | 34d | 2015-11-16 A | 2016-03-02 A | 3 | 100% | finish no earlier than 2016-03-02 |  |  |  |  |  |
| 5 | 5 | **2. Conception** |  | 10d | 2015-11-16 A | 2015-12-18 A | 3 | 100% |  |  | 308h | 308h | 6,600.01 | 6,600.01 |
| 6 | 5.1 | 2.1 Etude du code |  | 1d | 2015-11-16 A | 2015-11-16 A | 3 | 100% |  | Adrien; Lydie; Thomas; Zied | 28h | 28h | 600.01 | 600.01 |
| 7 | 5.2 | 2.2 Conception de l'architecture |  | 8d | 2015-11-17 A | 2015-12-17 A | 6 | 100% | finish no earlier than 2015-12-17 | Adrien; Lydie; Thomas; Zied | 224h | 224h | 4,800 | 4,800 |
| 8 | 5.3 | 2.3 Refactoring |  | 2d | 2015-12-17 A | 2015-12-18 A | 7 | 100% |  | Adrien; Lydie; Thomas; Zied | 56h | 56h | 1,200 | 1,200 |
| 9 | 6 | C. Jalon Fin conception | milestone | 0d | 2015-12-18 A | 2015-12-18 A | 8, 5 | 100% |  |  |  |  |  |  |
| 10 | 7 | **3. Réalisation noyau minimal fonctionnel** |  | 7d | 2015-12-17 A | 2016-01-18 A | 9 | 100% |  |  | 175h | 175h | 3,750 | 3,750 |
| 11 | 7.1 | 3.1 Transcription de l'algorithme |  | 4d | 2015-12-22 A | 2016-01-18 A | 9 | 100% |  | Adrien; Lydie | 56h | 56h | 1,200 | 1,200 |
| 12 | 7.2 | 3.2 Rendu 3D |  | 4d | 2015-12-22 A | 2016-01-18 A | 11 | 100% |  | Adrien | 28h | 28h | 600 | 600 |
| 13 | 7.3 | 3.3 Implémentation des classes |  | 7d | 2015-12-17 A | 2016-01-18 A | 9 | 100% |  | Lydie; Thomas | 91h | 91h | 1,950 | 1,950 |
| 14 | 8 | **4. Interface minimale** |  | 7d | 2015-12-17 A | 2016-01-18 A | 9 | 100% |  |  | 35h | 35h | 750 | 750 |
| 15 | 8.1 | 4.1 Développement espace 3D |  | 2d | 2015-12-17 A | 2015-12-18 A | 9 | 100% |  | Zied | 14h | 14h | 300 | 300 |
| 16 | 8.2 | 4.2 Développement espace 2D |  | 2d | 2015-12-21 A | 2015-12-22 A | 15 | 100% |  | Zied | 14h | 14h | 300 | 300 |
| 17 | 8.3 | 4.3 Menus (non liés) |  | 1d | 2016-01-18 A | 2016-01-18 A | 16 | 100% |  | Zied | 7h | 7h | 150 | 150 |
| 18 | 9 | D. Jalon Noyau fonctionnel minimal | milestone | 0d | 2016-01-18 A | 2016-01-18 A | 17, 12, 13, 10, 14 | 100% | finish no earlier than 2016-01-10 |  |  |  |  |  |
| 19 | 10 | **5. Amélioration IHM Choix des courbes** |  | 6d | 2016-01-19 A | 2016-01-26 A | 18 | 100% |  |  | 35h | 35h | 750 | 750 |
| 20 | 10.1 | 5.1 Choix des courbes |  | 3d | 2016-01-22 A | 2016-01-26 A | 18 | 100% | finish no earlier than 2016-01-25 | Zied | 21h | 21h | 450 | 450 |
| 21 | 10.2 | 5.2 Prise en compte des demandes |  | 2d | 2016-01-19 A | 2016-01-20 A | 20 | 100% |  | Zied | 14h | 14h | 300 | 300 |
| 22 | 11 | **6. Ajout fonctionnalités** |  | 8d | 2016-01-18 A | 2016-01-27 A | 18 | 100% |  |  | 49h | 49h | 1,050 | 1,050 |
| 23 | 11.1 | 6.1 Implémentation des classes Courbe | manual | 3d | 2016-01-18 A | 2016-01-20 A | 18 | 100% |  | Thomas [50%] | 21h | 21h | 450 | 450 |
| 24 | 11.2 | 6.2 Ajout de méridiennes |  | 0.5d | 2016-01-21 A | 2016-01-21 A | 18 | 100% |  | Lydie; Adrien | 7h | 7h | 150 | 150 |
| 25 | 11.3 | 6.3 Ajout de courbes de révolution |  | 0.5d | 2016-01-21 A | 2016-01-21 A | 24 | 100% |  | Adrien; Lydie | 7h | 7h | 150 | 150 |
| 26 | 11.4 | 6.4 Plans et Coupes |  | 1d | 2016-01-27 A | 2016-01-27 A | 18 | 100% |  | Thomas | 7h | 7h | 150 | 150 |
| 27 | 11.5 | 6.5 Caméra |  | 1d | 2016-01-20 A | 2016-01-20 A | 18 | 100% |  | Thomas | 7h | 7h | 150 | 150 |
| 28 | 12 | E. Jalon Application minimale | milestone | 0d | 2016-01-27 A | 2016-01-27 A | 19, 22, 27, 21, 25, 26, 23 | 100% |  |  |  |  |  |  |

Notes:
- 4: Tâche générique, réalisée par tout les membres du groupes
- 13: Implémentation des classes non liées aux fonctionnalités développées plus tard (dessin à main levée par exemple) et donc ne nécessitant pas de modifications dans d'autres classes

| ID | WBS | Task | Type | Duration | Start | Finish | Predecessors | Complete | Constraint | Resources | Work | Actual work | Cost | Actual cost |
| --- | --- | --- | --- | --- | --- | --- | --- | --- | --- | --- | --- | --- | --- | --- |
| 29 | 13 | **7. Amélioration IHM Paramètres** |  | 5d | 2016-01-25 A | 2016-01-29 A | 28 | 100% |  |  | 28h | 28h | 600 | 600 |
| 30 | 13.1 | 7.1 Prise en compte des demandes |  | 2d | 2016-01-28 A | 2016-01-29 A | 28 | 100% |  | Zied | 14h | 14h | 300 | 300 |
| 31 | 13.2 | 7.2 Paramètres simples |  | 2d | 2016-01-25 A | 2016-01-26 A | 30 | 100% |  | Zied | 14h | 14h | 300 | 300 |
| 32 | 14 | **8. Dessin à main levée méridienne** |  | 5d | 2016-02-16 A | 2016-02-22 A | 28 | 100% |  |  | 84h | 84h | 1,800 | 1,800 |
| 33 | 14.1 | 8.1 Implémentation des classes Dessin main levée | manual | 2d | 2016-02-16 A | 2016-02-17 A | 28 | 100% |  | Thomas | 14h | 14h | 300 | 300 |
| 34 | 14.2 | 8.2 Implémentation algorithme main levée |  | 2d | 2016-02-16 A | 2016-02-17 A | 28 | 100% | finish no earlier than 2016-02-17 | Lydie; Adrien | 28h | 28h | 600 | 600 |
| 35 | 14.3 | 8.3 Implantation dessin 2D |  | 2d | 2016-02-18 A | 2016-02-19 A | 34, 33 | 100% | start no earlier than 2016-02-17 | Lydie; Adrien | 28h | 28h | 600 | 600 |
| 36 | 14.4 | 8.4 Lien Dessin/Algorithme |  | 1d | 2016-02-22 A | 2016-02-22 A | 35 | 100% |  | Adrien; Lydie | 14h | 14h | 300 | 300 |
| 37 | 15 | F. Jalon Dessin main levée | milestone | 0d | 2016-02-22 A | 2016-02-22 A | 29, 32, 31, 36 | 100% |  |  |  |  |  |  |
| 38 | 16 | **9. Gestions de données** |  | 8d | 2016-02-15 A | 2016-02-24 A | 28 | 100% |  |  | 49h | 49h | 1,050 | 1,050 |
| 39 | 16.1 | 9.1 Implémentation des classes Gestion de données | manual | 1d | 2016-02-15 A | 2016-02-16 A | 28 | 100% |  | Thomas | 7h | 7h | 150 | 150 |
| 40 | 16.2 | 9.2 Export de l'espace 3D |  | 3d | 2016-02-17 A | 2016-02-19 A | 28 | 100% | finish no earlier than 2016-02-19 | Adrien | 21h | 21h | 450 | 450 |
| 41 | 16.3 | 9.3 Sauvegarde/Chargement des courbes |  | 3d | 2016-02-22 A | 2016-02-24 A | 37 | 100% | finish no earlier than 2016-02-24 | Thomas | 21h | 21h | 450 | 450 |
| 42 | 17 | **10. Amélioration de l'IHM Rentrer des formules** |  | 4d | 2016-02-23 A | 2016-02-26 A | 28 | 100% |  |  | 28h | 28h | 600 | 600 |
| 43 | 17.1 | 10.1 Prise en compte des demandes |  | 1d | 2016-02-23 A | 2016-02-23 A | 28 | 100% |  | Zied; Lydie | 14h | 14h | 300 | 300 |
| 44 | 17.2 | 10.2 Paramètres avancés |  | 1d | 2016-02-23 A | 2016-02-23 A | 28 | 100% |  |  |  |  |  |  |
| 45 | 17.3 | 10.3 Rentrer des formules |  | 2d | 2016-02-23 A | 2016-02-26 A | 28 | 100% | finish no earlier than 2016-02-26 | Lydie | 14h | 14h | 300 | 300 |
| 46 | 18 | G. Jalon Ajout de formules | milestone | 0d | 2016-02-26 A | 2016-02-26 A | 45, 38, 42, 41, 39 | 100% | start no earlier than 2016-02-26 |  |  |  |  |  |
| 47 | 19 | 11. Ajout des courbes par l'utilisateur |  | 1d | 2016-02-26 A | 2016-03-02 A |  | 100% | finish no earlier than 2016-03-02 |  |  |  |  |  |
| 48 | 20 | H. Jalon fin développement | milestone | 0d | 2016-03-07 A | 2016-03-07 A | 46 | 100% |  |  |  |  |  |  |
| 49 | 21 | 12. Rédaction rapport technique et finalisation documentation |  | 9d | 2016-03-08 A | 2016-03-18 A | 48 | 100% |  | Zied; Thomas; Adrien; Lydie | 252h | 252h | 5,400 | 5,400 |
| 50 | 22 | I. Jalon fin projet | milestone | 0d | 2016-03-18 A | 2016-03-18 A | 49, 4 | 100% |  |  |  |  |  |  |

Notes:
- 33: Implémentation des classes liées au dessin 2D à main levée et aux paramètres
